# i-Factor项目计划

Schedule from MS Project, 2014-06-02 to 2014-07-20.

## Calendars

- 标准: Mon-Fri 08:00-12:00, 13:00-17:00; Sat-Sun off. Exceptions (off unless hours are given): 2014-06-07 08:00-12:00, 13:00-17:00, 2014-06-14 to 2014-06-15, 2014-06-21 to 2014-06-22, 2014-06-28 to 2014-06-29, 2014-07-05 to 2014-07-06, 2014-07-12 to 2014-07-13, 2014-07-19 to 2014-07-20.

## Resources

| Resource |
| --- |
| 张扬 |
| 万军 |
| 冯晋杰 |
| 段爱国 |
| 卢飞 |
| 汪伟峰 |
| 郑超 |
| 刘龙祥 |
| XX |

## Schedule

| ID | WBS | Task | Type | Duration | Start | Finish | Total slack | Free slack | Constraint | Resources | Work |
| --- | --- | --- | --- | --- | --- | --- | --- | --- | --- | --- | --- |
| 1 | 1 | **i-Factor** |  | 36d | 2014-06-02 | 2014-07-20 | 0d |  |  |  | 3448h |
| 2 | 1.1 | **需求分析** |  | 6d | 2014-06-02 | 2014-06-07 | 30d |  |  |  | 96h |
| 3 | 1.1.1 | 确认中文版需求翻译 |  | 1d | 2014-06-03 | 2014-06-03 | 27d | 0d | start no earlier than 2014-06-03 | 张扬 | 8h |
| 4 | 1.1.2 | 确认业务流程 |  | 3d | 2014-06-02 | 2014-06-04 | 8d |  |  | 段爱国; 冯晋杰; 张扬 | 72h |
| 5 | 1.1.3 | 建立需求基线 |  | 1d | 2014-06-07 | 2014-06-07 | 3d | 0d | start no earlier than 2014-06-07 | 万军; 张扬 | 16h |
| 6 | 1.2 | **系统设计** |  | 11d | 2014-06-02 | 2014-06-13 | 1d |  |  |  | 328h |
| 7 | 1.2.1 | 设计后台UE |  | 4d | 2014-06-02 | 2014-06-05 | 7d |  |  | 冯晋杰; 卢飞; 汪伟峰 | 96h |
| 8 | 1.2.2 | 设计前台UE | manual | 4d | 2014-06-03 | 2014-06-06 |  |  |  | 段爱国; 刘龙祥; 郑超 | 96h |
| 9 | 1.2.3 | 设计数据库 |  | 5d | 2014-06-07 | 2014-06-12 | 26d |  | start no earlier than 2014-06-07 | 段爱国; 冯晋杰; 卢飞 | 120h |
| 10 | 1.2.4 | 建立设计基线 | manual | 1d | 2014-06-13 | 2014-06-13 |  |  |  | 万军; 张扬 | 16h |
| 11 | 1.3 | **系统构建** |  | 35d | 2014-06-02 | 2014-07-17 | 1d |  |  |  | 1440h |
| 12 | 1.3.1 | **搭建开发环境** |  | 3d | 2014-06-02 | 2014-06-04 | 33d |  |  |  | 40h |
| 13 | 1.3.1.1 | 后台框架 |  | 2d | 2014-06-02 | 2014-06-03 | 12d |  |  | 冯晋杰 | 16h |
| 14 | 1.3.1.2 | 前台框架 |  | 2d | 2014-06-03 | 2014-06-04 | 11d |  | start no earlier than 2014-06-03 | 段爱国 | 16h |
| 15 | 1.3.1.3 | 构建环境 |  | 1d | 2014-06-04 | 2014-06-04 | 8d |  | start no earlier than 2014-06-04 | 段爱国 | 8h |
| 16 | 1.3.2 | **编写模块代码** |  | 24d | 2014-06-15 | 2014-07-17 | 0d |  |  |  | 1400h |
| 17 | 1.3.2.1 | **后台模块** |  | 24d | 2014-06-15 | 2014-07-17 | 0d |  |  |  | 800h |
| 18 | 1.3.2.1.1 | 需求基线建立后细化 | manual | 25d | 2014-06-15 | 2014-07-17 |  |  |  | 冯晋杰; 卢飞; 汪伟峰; XX | 800h |
| 19 | 1.3.2.2 | **前台模块** |  | 24d | 2014-06-15 | 2014-07-17 | 0d |  |  |  | 600h |
| 20 | 1.3.2.2.1 | 需求基线建立后细化 | manual | 25d | 2014-06-15 | 2014-07-17 |  |  |  | 段爱国; 刘龙祥; 郑超 | 600h |
| 21 | 1.4 | **系统测试** |  | 25d | 2014-06-15 | 2014-07-20 | 0d |  |  |  | 1544h |
| 22 | 1.4.1 | **后台测试用例** |  | 24d | 2014-06-15 | 2014-07-17 | 0d |  |  |  | 800h |
| 23 | 1.4.1.1 | 设计基线建立后细化 | manual | 25d | 2014-06-15 | 2014-07-17 |  |  |  | XX; 冯晋杰; 卢飞; 汪伟峰 | 800h |
| 24 | 1.4.2 | **前台测试用例** |  | 24d | 2014-06-15 | 2014-07-17 | 0d |  |  |  | 600h |
| 25 | 1.4.2.1 | 设计基线建立后细化 | manual | 25d | 2014-06-15 | 2014-07-17 |  |  |  | 段爱国; 刘龙祥; 郑超 | 600h |
| 26 | 1.4.3 | 执行测试用例 | manual | 2d | 2014-07-18 | 2014-07-20 |  |  |  | XX; 段爱国; 冯晋杰; 刘龙祥; 卢飞; 万军; 汪伟峰; 张扬; 郑超 | 144h |

| ID | WBS | Task | Type | Duration | Start | Finish | Resources | Work |
| --- | --- | --- | --- | --- | --- | --- | --- | --- |
| 27 | 1.5 | **系统上线** |  | 1d | 2014-07-20 | 2014-07-20 |  | 40h |
| 28 | 1.5.1 | 第一版 | manual | 1d | 2014-07-20 | 2014-07-20 | XX; 刘龙祥; 郑超; 段爱国; 冯晋杰 | 40h |
