# i-Factor项目计划

Schedule from MS Project, 2014-06-03 to 2014-07-20.

## Calendars

- 标准: Mon-Fri 08:00-12:00, 13:00-17:00; Sat-Sun off. Exceptions (off unless hours are given): 2014-06-14 to 2014-06-15 08:00-12:00, 13:00-17:00, 2014-06-21 to 2014-06-22 08:00-12:00, 13:00-17:00, 2014-06-28 08:00-12:00, 13:00-17:00, 2014-07-05 to 2014-07-06 08:00-12:00, 13:00-17:00, 2014-07-12 to 2014-07-13 08:00-12:00, 13:00-17:00, 2014-07-19 to 2014-07-20 08:00-12:00, 13:00-17:00.

## Resources

| Resource |
| --- |
| 张扬 |
| 万军 |
| 冯晋杰 |
| 段爱国 |
| 李志超 |
| 汪伟峰 |
| 郑超 |
| 刘龙祥 |
| 贺志超 |

## Schedule

| ID | WBS | Task | Type | Duration | Start | Finish | Predecessors | Total slack | Constraint | Resources | Work |
| --- | --- | --- | --- | --- | --- | --- | --- | --- | --- | --- | --- |
| 1 | 1 | **i-Factor** |  | 45d? | 2014-06-03 | 2014-07-20 |  | 0d |  |  | 2120.8h |
| 2 | 1.1 | **需求分析** |  | 10d | 2014-06-03 | 2014-06-14 |  | 35d |  |  | 240h |
| 3 | 1.1.1 | 需求定版 |  | 10d | 2014-06-03 | 2014-06-14 |  | 35d | start no earlier than 2014-06-03 | 张扬; 段爱国; 冯晋杰 | 240h |
| 4 | 1.2 | **系统设计** |  | 11d | 2014-06-09 | 2014-06-19 |  | 0d |  |  | 176h |
| 5 | 1.2.1 | 后台流程设计 |  | 4d | 2014-06-16 | 2014-06-19 |  | 30d | start no earlier than 2014-06-16 | 冯晋杰 | 32h |
| 6 | 1.2.2 | 前台界面原型 | manual | 9d | 2014-06-09 | 2014-06-17 |  |  |  | 刘龙祥; 郑超 | 144h |
| 7 | 1.3 | **系统构建** |  | 25d? | 2014-06-16 | 2014-07-11 |  | 0d |  |  | 1176.8h |
| 8 | 1.3.1 | **搭建开发环境** |  | 4d | 2014-06-16 | 2014-06-19 |  | 0d |  |  | 32h |
| 9 | 1.3.1.1 | 开发环境 |  | 4d | 2014-06-16 | 2014-06-19 |  | 0d | finish no earlier than 2014-06-19 | 段爱国 | 32h |
| 10 | 1.3.2 | **编写模块代码** |  | 21d? | 2014-06-20 | 2014-07-11 |  | 0d |  |  | 1144.8h |
| 11 | 1.3.2.1 | **运营管理平台（mgt）** |  | 21d | 2014-06-20 | 2014-07-11 |  | 0d |  |  | 486.4h |
| 12 | 1.3.2.1.1 | **流程辅助模块** |  | 14d | 2014-06-20 | 2014-07-04 |  | 0d |  |  | 145.6h |
| 13 | 1.3.2.1.1.1 | 冯晋杰 | manual | 14d | 2014-06-20 | 2014-07-04 | 8 |  |  | 冯晋杰 [80%] | 89.6h |
| 14 | 1.3.2.1.1.2 | 贺志超 | manual | 7d | 2014-06-20 | 2014-06-26 | 8 |  |  | 贺志超 | 56h |
| 15 | 1.3.2.1.2 | SME Application | manual | 8d | 2014-06-20 | 2014-06-27 | 8 |  |  | 冯晋杰 [20%]; 汪伟峰 | 76.8h |
| 16 | 1.3.2.1.3 | Investor Application |  | 6d | 2014-06-28 | 2014-07-04 | 15 | 0d | start no earlier than 2014-06-28 | 李志超; 汪伟峰 | 96h |
| 17 | 1.3.2.1.4 | Invoice Delivery | manual | 7d | 2014-07-05 | 2014-07-11 | 12 |  |  | 贺志超; 冯晋杰 [80%] | 100.8h |
| 18 | 1.3.2.1.5 | Auction | manual | 7d | 2014-07-05 | 2014-07-11 | 16 |  |  | 冯晋杰 [20%]; 汪伟峰 | 67.2h |
| 19 | 1.3.2.2 | **线上交易平台（app）** |  | 21d | 2014-06-20 | 2014-07-11 |  | 0d |  |  | 488h |
| 20 | 1.3.2.2.1 | 用户注册 | manual | 8d | 2014-06-20 | 2014-06-27 | 8 |  |  | 段爱国 [70%] | 44.8h |
| 21 | 1.3.2.2.2 | SME Application | manual | 8d | 2014-06-20 | 2014-06-27 | 8 |  |  | 郑超; 段爱国 [10%] | 70.4h |
| 22 | 1.3.2.2.3 | Investor Application | manual | 8d | 2014-06-20 | 2014-06-27 | 8 |  |  | 刘龙祥; 段爱国 [10%] | 70.4h |
| 23 | 1.3.2.2.4 | 按UI调整界面 | manual | 6d | 2014-06-28 | 2014-07-04 | 21, 22 |  |  | 刘龙祥; 郑超 | 96h |
| 24 | 1.3.2.2.5 | 网站基础功能 | manual | 6d | 2014-06-28 | 2014-07-04 | 20 |  |  | 段爱国 [80%] | 38.4h |
| 25 | 1.3.2.2.6 | Invoice Delivery | manual | 7d | 2014-07-05 | 2014-07-11 | 23 |  |  | 刘龙祥; 郑超 | 112h |
| 26 | 1.3.2.2.7 | Auction | manual | 7d | 2014-07-05 | 2014-07-11 | 24 |  |  | 段爱国 | 56h |

| ID | WBS | Task | Type | Duration | Start | Finish | Predecessors | Total slack | Constraint | Resources | Work |
| --- | --- | --- | --- | --- | --- | --- | --- | --- | --- | --- | --- |
| 27 | 1.3.2.3 | **前置接口服务（fep）** |  | 21d? | 2014-06-20 | 2014-07-11 |  | 0d |  |  | 170.4h |
| 28 | 1.3.2.3.1 | **i-Factor<==>VPBank** |  | 5d? | 2014-06-30 | 2014-07-04 |  | 0d |  |  | 44h |
| 29 | 1.3.2.3.1.1 | 整理流程图中接口 |  | 2d? | 2014-06-30 | 2014-07-01 |  | 10d | start no earlier than 2014-06-30 | 贺志超; 段爱国 [10%] | 17.6h |
| 30 | 1.3.2.3.1.2 | 实现接口调用挡板 |  | 3d? | 2014-07-02 | 2014-07-04 |  | 7d | start no earlier than 2014-07-02 | 贺志超; 段爱国 [10%] | 26.4h |
| 31 | 1.3.2.3.1.3 | 接口联调 | manual | 1d? | 2014-06-30 | 2014-06-30 |  |  |  |  |  |
| 32 | 1.3.2.3.2 | **app<==>mgt** |  | 21d | 2014-06-20 | 2014-07-11 |  | 0d |  |  | 126.4h |
| 33 | 1.3.2.3.2.1 | 整理流程图中接口 |  | 2d | 2014-06-20 | 2014-06-21 |  | 19d | finish no earlier than 2014-06-21 | 李志超; 段爱国 [10%] | 17.6h |
| 34 | 1.3.2.3.2.2 | 实现接口调用挡板 |  | 6d | 2014-06-22 | 2014-06-27 |  | 13d | finish no earlier than 2014-06-27 | 李志超; 段爱国 [10%] | 52.8h |
| 35 | 1.3.2.3.2.3 | 接口联调 | manual | 7d | 2014-07-05 | 2014-07-11 |  |  |  | 李志超 | 56h |
| 36 | 1.4 | **系统测试** |  | 8d | 2014-07-12 | 2014-07-19 |  | 0d |  |  | 512h |
| 37 | 1.4.1 | **测试用例** |  | 6d | 2014-07-12 | 2014-07-17 |  | 0d |  |  | 104h |
| 38 | 1.4.1.1 | 业务测试用例 | manual | 4d | 2014-07-14 | 2014-07-17 |  |  |  | 张扬 | 32h |
| 39 | 1.4.1.2 | 系统测试用例 | manual | 6d | 2014-07-12 | 2014-07-17 | 7 |  |  | 贺志超 [50%]; 刘龙祥 [50%]; 郑超 [50%] | 72h |
| 40 | 1.4.2 | 单元测试 | manual | 6d | 2014-07-12 | 2014-07-17 | 7 |  |  | 贺志超 [50%]; 段爱国; 冯晋杰; 刘龙祥 [50%]; 汪伟峰; 郑超 [50%]; 李志超 | 264h |
| 41 | 1.4.3 | 集成测试 | manual | 2d | 2014-07-18 | 2014-07-19 | 7, 37 |  |  | 段爱国; 冯晋杰; 贺志超; 李志超; 刘龙祥; 万军; 汪伟峰; 张扬; 郑超 | 144h |
| 42 | 1.5 | **系统上线** |  | 1d | 2014-07-20 | 2014-07-20 |  |  |  |  | 16h |
| 43 | 1.5.1 | 第一版 |  | 1d | 2014-07-20 | 2014-07-20 | 36 | 0d | finish no earlier than 2014-07-20 | 贺志超; 郑超 | 16h |
