# i-Factor项目计划

Schedule from MS Project, 2014-06-03 to 2014-07-20.

## Calendars

- 标准: Mon-Fri 08:00-12:00, 13:00-17:00; Sat-Sun off. Exceptions (off unless hours are given): 2014-06-14 to 2014-06-15 08:00-12:00, 13:00-17:00, 2014-06-21 to 2014-06-22 08:00-12:00, 13:00-17:00, 2014-06-28 to 2014-06-29 08:00-12:00, 13:00-17:00, 2014-07-05 to 2014-07-06 08:00-12:00, 13:00-17:00, 2014-07-12 to 2014-07-13 08:00-12:00, 13:00-17:00, 2014-07-19 to 2014-07-20 08:00-12:00, 13:00-17:00.

## Resources

| Resource |
| --- |
| 张扬 |
| 万军 |
| 冯晋杰 |
| 段爱国 |
| 李志超 |
| 汪伟峰 |
| 郑超 |
| 刘龙祥 |
| 贺志超 |

## Schedule

| ID | WBS | Task | Type | Duration | Start | Finish | Predecessors | Total slack | Constraint | Resources | Work |
| --- | --- | --- | --- | --- | --- | --- | --- | --- | --- | --- | --- |
| 1 | 1 | **i-Factor** |  | 46d | 2014-06-03 | 2014-07-20 |  | 0d |  |  | 2257.6h |
| 2 | 1.1 | **需求分析** |  | 10d | 2014-06-03 | 2014-06-14 |  | 36d |  |  | 240h |
| 3 | 1.1.1 | 需求定版 |  | 10d | 2014-06-03 | 2014-06-14 |  | 36d | start no earlier than 2014-06-03 | 张扬; 段爱国; 冯晋杰 | 240h |
| 4 | 1.2 | **系统设计** |  | 11d | 2014-06-09 | 2014-06-19 |  | 0d |  |  | 176h |
| 5 | 1.2.1 | 后台流程设计 |  | 4d | 2014-06-16 | 2014-06-19 |  | 30d | start no earlier than 2014-06-16 | 冯晋杰 | 32h |
| 6 | 1.2.2 | 前台界面原型 | manual | 9d | 2014-06-09 | 2014-06-17 |  |  |  | 刘龙祥; 郑超 | 144h |
| 7 | 1.3 | **系统构建** |  | 26d | 2014-06-16 | 2014-07-11 |  | 0d |  |  | 1313.6h |
| 8 | 1.3.1 | **搭建开发环境** |  | 4d | 2014-06-16 | 2014-06-19 |  | 22d |  |  | 32h |
| 9 | 1.3.1.1 | 开发环境 |  | 4d | 2014-06-16 | 2014-06-19 |  | 22d | finish no earlier than 2014-06-19 | 段爱国 | 32h |
| 10 | 1.3.2 | **编写模块代码** |  | 22d | 2014-06-20 | 2014-07-11 |  | 0d |  |  | 1000h |
| 11 | 1.3.2.1 | **运营管理平台（mgt）** |  | 22d | 2014-06-20 | 2014-07-11 |  | 0d |  |  | 366.4h |
| 12 | 1.3.2.1.1 | **流程辅助模块** |  | 20d | 2014-06-22 | 2014-07-11 |  | 0d |  |  | 121.6h |
| 13 | 1.3.2.1.1.1 | 总体设计 | manual | 6d | 2014-06-22 | 2014-06-27 |  |  |  | 冯晋杰 [80%] | 38.4h |
| 14 | 1.3.2.1.1.2 | 模块设计 | manual | 3d | 2014-07-04 | 2014-07-06 | 13, 19, 22, 25, 28 |  |  | 冯晋杰 [80%] | 19.2h |
| 15 | 1.3.2.1.1.3 | **模块实现** |  | 14d | 2014-06-28 | 2014-07-11 |  | 0d |  |  | 64h |
| 16 | 1.3.2.1.1.3.1 | 评分卡实现 | manual | 4d | 2014-06-28 | 2014-07-01 |  |  |  | 贺志超 | 32h |
| 17 | 1.3.2.1.1.3.2 | 其他 | manual | 4d | 2014-07-08 | 2014-07-11 |  |  |  | 贺志超 | 32h |
| 18 | 1.3.2.1.2 | **Investor Application** |  | 13d | 2014-06-20 | 2014-07-02 |  | 0d |  |  | 100.8h |
| 19 | 1.3.2.1.2.1 | 流程设计 | manual | 2d | 2014-06-20 | 2014-06-21 |  |  |  | 冯晋杰 [80%] | 12.8h |
| 20 | 1.3.2.1.2.2 | 流程实现 | manual | 11d | 2014-06-22 | 2014-07-02 | 19 |  |  | 汪伟峰 | 88h |
| 21 | 1.3.2.1.3 | **SME Application** |  | 9d | 2014-06-29 | 2014-07-07 |  | 0d |  |  | 49.6h |
| 22 | 1.3.2.1.3.1 | 流程设计 | manual | 3d | 2014-06-29 | 2014-07-01 |  |  |  | 冯晋杰 [40%] | 9.6h |
| 23 | 1.3.2.1.3.2 | 流程实现 | manual | 5d | 2014-07-03 | 2014-07-07 | 20, 22 |  |  | 贺志超 | 40h |
| 24 | 1.3.2.1.4 | **Invoice Delivery** |  | 7d | 2014-07-05 | 2014-07-11 |  |  |  |  | 49.6h |
| 25 | 1.3.2.1.4.1 | 流程设计 | manual | 3d | 2014-06-29 | 2014-07-01 |  |  |  | 冯晋杰 [40%] | 9.6h |
| 26 | 1.3.2.1.4.2 | 流程实现 | manual | 5d | 2014-07-03 | 2014-07-07 | 25 |  |  | 汪伟峰 | 40h |

| ID | WBS | Task | Type | Duration | Start | Finish | Predecessors | Total slack | Constraint | Resources | Work |
| --- | --- | --- | --- | --- | --- | --- | --- | --- | --- | --- | --- |
| 27 | 1.3.2.1.5 | **Auction** |  | 10d | 2014-07-02 | 2014-07-11 |  | 0d |  |  | 44.8h |
| 28 | 1.3.2.1.5.1 | 流程设计 | manual | 2d | 2014-07-02 | 2014-07-03 |  |  |  | 冯晋杰 [80%] | 12.8h |
| 29 | 1.3.2.1.5.2 | 流程实现 | manual | 4d | 2014-07-08 | 2014-07-11 | 20, 28 |  |  | 汪伟峰 | 32h |
| 30 | 1.3.2.2 | **线上交易平台（app）** |  | 22d | 2014-06-20 | 2014-07-11 |  | 0d |  |  | 457.6h |
| 31 | 1.3.2.2.1 | **用户注册** |  | 2d | 2014-07-02 | 2014-07-03 |  | 0d |  |  | 16h |
| 32 | 1.3.2.2.1.1 | Seller | manual | 1d | 2014-07-03 | 2014-07-03 |  |  |  | 刘龙祥 | 8h |
| 33 | 1.3.2.2.1.2 | Buyer | manual | 1d | 2014-07-02 | 2014-07-02 |  |  |  | 刘龙祥 | 8h |
| 34 | 1.3.2.2.2 | **用户申请** |  | 10d | 2014-06-20 | 2014-06-29 |  | 0d |  |  | 160h |
| 35 | 1.3.2.2.2.1 | SME Application | manual | 10d | 2014-06-20 | 2014-06-29 |  |  |  | 郑超 | 80h |
| 36 | 1.3.2.2.2.2 | Investor Application | manual | 10d | 2014-06-20 | 2014-06-29 |  |  |  | 刘龙祥 | 80h |
| 37 | 1.3.2.2.3 | **Invoice Delivery** |  | 2d | 2014-07-02 | 2014-07-03 |  | 0d |  |  | 16h |
| 38 | 1.3.2.2.3.1 | Seller | manual | 2d | 2014-07-02 | 2014-07-03 |  |  |  | 郑超 | 16h |
| 39 | 1.3.2.2.4 | **Auction** |  | 2d | 2014-06-30 | 2014-07-01 |  | 0d |  |  | 32h |
| 40 | 1.3.2.2.4.1 | Seller | manual | 2d | 2014-06-30 | 2014-07-01 |  |  |  | 郑超 | 16h |
| 41 | 1.3.2.2.4.2 | Buyer | manual | 2d | 2014-06-30 | 2014-07-01 |  |  |  | 刘龙祥 | 16h |
| 42 | 1.3.2.2.5 | **按UI调整界面** |  | 5d | 2014-07-04 | 2014-07-08 |  | 0d |  |  | 80h |
| 43 | 1.3.2.2.5.1 | Seller | manual | 5d | 2014-07-04 | 2014-07-08 |  |  |  | 郑超 | 40h |
| 44 | 1.3.2.2.5.2 | Buyer | manual | 5d | 2014-07-04 | 2014-07-08 |  |  |  | 刘龙祥 | 40h |
| 45 | 1.3.2.2.6 | **按流程调整交互逻辑** |  | 3d | 2014-07-09 | 2014-07-11 |  | 0d |  |  | 48h |
| 46 | 1.3.2.2.6.1 | Seller | manual | 3d | 2014-07-09 | 2014-07-11 |  |  |  | 郑超 | 24h |
| 47 | 1.3.2.2.6.2 | Buyer | manual | 3d | 2014-07-09 | 2014-07-11 |  |  |  | 刘龙祥 | 24h |
| 48 | 1.3.2.2.7 | 流程交互 | manual | 22d | 2014-06-20 | 2014-07-11 |  |  |  | 段爱国 [60%] | 105.6h |
| 49 | 1.3.2.3 | **前置接口服务（fep）** |  | 22d | 2014-06-20 | 2014-07-11 |  | 0d |  |  | 176h |
| 50 | 1.3.2.3.1 | 整理流程图中接口 |  | 10d | 2014-06-20 | 2014-06-29 |  | 0d | finish no earlier than 2014-06-29 | 李志超 | 80h |
| 51 | 1.3.2.3.2 | 实现接口调用挡板 |  | 5d | 2014-06-30 | 2014-07-04 | 50 | 0d | start no earlier than 2014-06-30 | 李志超 | 40h |
| 52 | 1.3.2.3.3 | 接口联调 | manual | 7d | 2014-07-05 | 2014-07-11 | 51 |  |  | 李志超 | 56h |

| ID | WBS | Task | Type | Duration | Start | Finish | Predecessors | Total slack | Constraint | Resources | Work |
| --- | --- | --- | --- | --- | --- | --- | --- | --- | --- | --- | --- |
| 53 | 1.3.3 | **架构支持** |  | 22d | 2014-06-20 | 2014-07-11 |  | 0d |  |  | 281.6h |
| 54 | 1.3.3.1 | Mgt代码Review/答疑 | manual | 22d | 2014-06-20 | 2014-07-11 |  |  |  | 冯晋杰 [20%] | 35.2h |
| 55 | 1.3.3.2 | App代码Review/答疑 | manual | 22d | 2014-06-20 | 2014-07-11 |  |  |  | 段爱国 [20%] | 35.2h |
| 56 | 1.3.3.3 | Fep代码Review/答疑 | manual | 22d | 2014-06-20 | 2014-07-11 |  |  |  | 段爱国 [10%] | 17.6h |
| 57 | 1.3.3.4 | 整体结构调整 | manual | 22d | 2014-06-20 | 2014-07-11 |  |  |  | 段爱国 [10%] | 17.6h |
| 58 | 1.3.3.5 | 需求答疑 | manual | 22d | 2014-06-20 | 2014-07-11 |  |  |  | 张扬 | 176h |
| 59 | 1.4 | **系统测试** |  | 8d | 2014-07-12 | 2014-07-19 |  | 0d |  |  | 512h |
| 60 | 1.4.1 | **测试用例** |  | 6d | 2014-07-12 | 2014-07-17 |  | 0d |  |  | 104h |
| 61 | 1.4.1.1 | 业务测试用例 | manual | 4d | 2014-07-14 | 2014-07-17 |  |  |  | 张扬 | 32h |
| 62 | 1.4.1.2 | 系统测试用例 | manual | 6d | 2014-07-12 | 2014-07-17 | 7 |  |  | 贺志超 [50%]; 刘龙祥 [50%]; 郑超 [50%] | 72h |
| 63 | 1.4.2 | 单元测试 | manual | 6d | 2014-07-12 | 2014-07-17 | 7 |  |  | 贺志超 [50%]; 段爱国; 冯晋杰; 刘龙祥 [50%]; 汪伟峰; 郑超 [50%]; 李志超 | 264h |
| 64 | 1.4.3 | 集成测试 | manual | 2d | 2014-07-18 | 2014-07-19 | 7, 60 |  |  | 段爱国; 冯晋杰; 贺志超; 李志超; 刘龙祥; 万军; 汪伟峰; 张扬; 郑超 | 144h |
| 65 | 1.5 | **系统上线** |  | 1d | 2014-07-20 | 2014-07-20 |  |  |  |  | 16h |
| 66 | 1.5.1 | 第一版 |  | 1d | 2014-07-20 | 2014-07-20 | 59 | 0d | finish no earlier than 2014-07-20 | 贺志超; 郑超 | 16h |
